# Planificación RestApp Nueva

Schedule from MS Project, 2013-07-30 to 2014-09-11, status date 2013-07-29, A marks actual dates.

## Calendars

- Tesis: Mon off; Tue-Thu 17:00-21:00; Fri-Sun off. Exceptions (off unless hours are given): 2013-08-19 (Feriado), 2013-08-21 to 2013-08-23 (Congreso De Sistema), 2013-09-09 to 2013-09-13 (Fecha de examen), 2013-10-14 (Feriado), 2013-10-21 to 2013-10-25 (Fecha de examen), 2013-11-25 (Feriado), 2013-12-02 to 2013-12-06 (Fecha de examen), 2013-12-16 to 2013-12-20 (Fecha de examen), 2013-12-23 to 2013-12-27 (Semana de navidad), 2013-12-30 to 2014-01-03 (Semana de año nuevo), 2014-01-06 to 2014-01-31 (Vacaciones), 2014-02-10 to 2014-02-14 (Fecha de examen), 2014-02-17 to 2014-02-25 (Fecha de examen), 2014-03-03 to 2014-03-07 (Fecha de examen).

## Resources

| Resource |
| --- |
| Oscar Salomón |
| Lucas Ferrero |
| Fernando Raviola |

## Schedule

| ID | WBS | Task | Type | Duration | Start | Finish | Predecessors | Complete | Remaining | Baseline start | Baseline finish | Baseline duration | Total slack | Resources | Work | Actual work |
| --- | --- | --- | --- | --- | --- | --- | --- | --- | --- | --- | --- | --- | --- | --- | --- | --- |
| 1 | 1 | **RestApp** |  | 67.24d | 2013-07-30 17:00 A | 2014-09-11 18:57 |  | 31% | 46.53d | 2013-07-30 17:00 | 2014-09-23 18:00 | 69.12d | 0d |  | 1581.85h | 729.85h |
| 2 | 1.1 | **INICIO** |  | 11.37d | 2013-07-30 17:00 A | 2013-10-01 19:57 A |  | 100% |  | 2013-07-30 17:00 | 2013-09-25 21:00 | 10.5d |  |  | 272.85h | 272.85h |
| 3 | 1.1.1 | **Iteración I1** |  | 11.37d | 2013-07-30 17:00 A | 2013-10-01 19:57 A |  | 100% |  | 2013-07-30 17:00 | 2013-09-25 21:00 | 10.5d |  |  | 272.85h | 272.85h |
| 4 | 1.1.1.1 | **Modelo de Negocio** |  | 1.12d | 2013-07-30 17:00 A | 2013-08-01 17:57 A |  | 100% |  | 2013-07-30 17:00 | 2013-08-01 19:00 | 1.25d |  |  | 26.85h | 26.85h |
| 5 | 1.1.1.1.1 | Analisis del dominio del problema |  | 3.5h | 2013-07-30 17:00 A | 2013-07-30 20:30 A |  | 100% |  | 2013-07-30 17:00 | 2013-07-30 21:00 | 4h |  | Fernando Raviola; Lucas Ferrero; Oscar Salomón | 10.5h | 10.5h |
| 6 | 1.1.1.1.2 | Confección de entrevista |  | 2h | 2013-07-30 20:30 A | 2013-07-31 18:30 A | 5 | 100% |  | 2013-07-31 17:00 | 2013-07-31 19:00 | 2h |  | Fernando Raviola; Lucas Ferrero; Oscar Salomón | 6h | 6h |
| 7 | 1.1.1.1.3 | Realización de entrevista |  | 1.45h | 2013-07-31 18:30 A | 2013-07-31 19:57 A | 6 | 100% |  | 2013-07-31 19:00 | 2013-07-31 21:00 | 2h |  | Fernando Raviola; Lucas Ferrero; Oscar Salomón | 4.35h | 4.35h |
| 8 | 1.1.1.1.4 | Analisis de Entrevista |  | 2h | 2013-07-31 19:57 A | 2013-08-01 17:57 A | 7 | 100% |  | 2013-08-01 17:00 | 2013-08-01 19:00 | 2h |  | Fernando Raviola; Lucas Ferrero; Oscar Salomón | 6h | 6h |
| 9 | 1.1.1.2 | **Requerimientos** |  | 1.88d | 2013-08-01 17:57 A | 2013-08-08 20:57 A | 4 | 100% |  | 2013-08-01 19:00 | 2013-08-13 21:00 | 2.25d |  |  | 45h | 45h |
| 10 | 1.1.1.2.1 | Definición de caracteristicas y limitaciones |  | 6.5h | 2013-08-01 17:57 A | 2013-08-06 20:27 A |  | 100% |  | 2013-08-01 19:00 | 2013-08-07 19:00 | 8h |  | Fernando Raviola; Lucas Ferrero; Oscar Salomón | 19.5h | 19.5h |
| 11 | 1.1.1.2.2 | Definición de Requerimientos Funcionales y No Funcionales |  | 8.5h | 2013-08-06 20:27 A | 2013-08-08 20:57 A | 10 | 100% |  | 2013-08-07 19:00 | 2013-08-13 21:00 | 10h |  | Fernando Raviola; Lucas Ferrero; Oscar Salomón | 25.5h | 25.5h |
| 12 | 1.1.1.3 | **Análisis/Diseño** |  | 0.5d | 2013-08-08 20:57 A | 2013-08-13 20:57 A | 9 | 100% |  | 2013-08-14 17:00 | 2013-08-15 21:00 | 1d |  |  | 12h | 12h |
| 13 | 1.1.1.3.1 | Definición inicial del Modelo de Casos de Usos |  | 4h | 2013-08-08 20:57 A | 2013-08-13 20:57 A |  | 100% |  | 2013-08-14 17:00 | 2013-08-15 21:00 | 8h |  | Fernando Raviola; Lucas Ferrero; Oscar Salomón | 12h | 12h |
| 14 | 1.1.1.4 | **Gestión del Proyecto** |  | 6.12d | 2013-08-13 20:57 A | 2013-09-24 17:57 A | 12 | 100% |  | 2013-08-20 17:00 | 2013-09-18 21:00 | 4.5d |  |  | 147h | 147h |
| 15 | 1.1.1.4.1 | Estudio de prefactibilidad |  | 5h | 2013-08-13 20:57 A | 2013-08-15 17:57 A |  | 100% |  | 2013-08-20 17:00 | 2013-08-27 21:00 | 8h |  | Fernando Raviola; Lucas Ferrero; Oscar Salomón | 15h | 15h |
| 16 | 1.1.1.4.2 | Planificación |  | 18h | 2013-08-15 17:57 A | 2013-08-29 19:57 A | 15 | 100% |  | 2013-08-28 17:00 | 2013-08-29 21:00 | 8h |  | Fernando Raviola; Lucas Ferrero; Oscar Salomón | 54h | 54h |
| 17 | 1.1.1.4.3 | Gestión de riesgos (definición) |  | 10h | 2013-08-29 19:57 A | 2013-09-05 17:57 A | 16 | 100% |  | 2013-09-03 17:00 | 2013-09-04 21:00 | 8h |  | Fernando Raviola; Lucas Ferrero; Oscar Salomón | 30h | 30h |
| 18 | 1.1.1.4.4 | Gestión de configuración (definición) |  | 10h | 2013-09-05 17:57 A | 2013-09-18 19:57 A | 17 | 100% |  | 2013-09-05 17:00 | 2013-09-17 21:00 | 8h |  | Fernando Raviola; Lucas Ferrero; Oscar Salomón | 30h | 30h |
| 19 | 1.1.1.4.5 | Presentación Inicial |  | 6h | 2013-09-18 19:57 A | 2013-09-24 17:57 A | 18 | 100% |  | 2013-09-18 17:00 | 2013-09-18 21:00 | 0.5d |  | Fernando Raviola; Lucas Ferrero; Oscar Salomón | 18h | 18h |
| 20 | 1.1.1.5 | **Gestión de configuración** |  | 1.25d | 2013-09-24 17:57 A | 2013-09-26 19:57 A | 14 | 100% |  | 2013-09-19 17:00 | 2013-09-24 21:00 | 1d |  |  | 30h | 30h |
| 21 | 1.1.1.5.1 | Preparación del ambiente de versionado |  | 10h | 2013-09-24 17:57 A | 2013-09-26 19:57 A |  | 100% |  | 2013-09-19 17:00 | 2013-09-24 21:00 | 8h |  | Fernando Raviola; Lucas Ferrero; Oscar Salomón | 30h | 30h |
| 22 | 1.1.1.6 | **Ambiente** |  | 0.5d | 2013-09-26 19:57 A | 2013-10-01 19:57 A | 20 | 100% |  | 2013-09-25 17:00 | 2013-09-25 21:00 | 0.5d |  |  | 12h | 12h |
| 23 | 1.1.1.6.1 | Identificación y evaluación de herramientas |  | 4h | 2013-09-26 19:57 A | 2013-10-01 19:57 A |  | 100% |  | 2013-09-25 17:00 | 2013-09-25 21:00 | 4h |  | Fernando Raviola; Lucas Ferrero; Oscar Salomón | 12h | 12h |
| 24 | 1.2 | Objetivos del ciclo de vida | milestone | 0h | 2013-10-01 19:57 A | 2013-10-01 19:57 A | 2 | 100% |  | 2013-09-25 21:00 | 2013-09-25 21:00 |  |  |  |  |  |

| ID | WBS | Task | Duration | Start | Finish | Predecessors | Complete | Baseline start | Baseline finish | Baseline duration | Resources | Work | Actual work |
| --- | --- | --- | --- | --- | --- | --- | --- | --- | --- | --- | --- | --- | --- |
| 25 | 1.3 | **ELABORACIÓN** | 17.12d | 2013-10-01 19:57 A | 2014-03-13 20:57 A | 24 | 100% | 2013-09-26 17:00 | 2014-03-19 21:00 | 19d |  | 394h | 394h |
| 26 | 1.3.1 | **Iteración E1** | 8.19d | 2013-10-01 19:57 A | 2013-11-14 17:27 A |  | 100% | 2013-09-26 17:00 | 2013-11-06 18:00 | 7.12d |  | 196.5h | 196.5h |
| 27 | 1.3.1.1 | **Modelo de Negocio** | 1d | 2013-10-01 19:57 A | 2013-10-03 19:57 A |  | 100% | 2013-09-26 17:00 | 2013-10-01 20:00 | 0.88d |  | 24h | 24h |
| 28 | 1.3.1.1.1 | Entendimiento del Modelo de Negocio | 8h | 2013-10-01 19:57 A | 2013-10-03 19:57 A |  | 100% | 2013-09-26 17:00 | 2013-10-01 20:00 | 7h | Fernando Raviola; Lucas Ferrero; Oscar Salomón | 24h | 24h |
| 29 | 1.3.1.2 | **Requerimientos** | 2d | 2013-10-03 19:57 A | 2013-10-15 19:57 A | 27 | 100% | 2013-10-01 20:00 | 2013-10-08 20:00 | 1.5d |  | 48h | 48h |
| 30 | 1.3.1.2.1 | Definicón de nuevos requerimientos | 3h | 2013-10-03 19:57 A | 2013-10-08 18:57 A |  | 100% | 2013-10-01 20:00 | 2013-10-02 18:00 | 2h | Fernando Raviola; Lucas Ferrero; Oscar Salomón | 9h | 9h |
| 31 | 1.3.1.2.2 | Documentación de requerimientos según estandar | 8h | 2013-10-08 18:57 A | 2013-10-10 18:57 A | 30 | 100% | 2013-10-02 18:00 | 2013-10-03 19:00 | 5h | Fernando Raviola; Lucas Ferrero; Oscar Salomón | 24h | 24h |
| 32 | 1.3.1.2.3 | Jerarquización de requerimientos | 5h | 2013-10-10 18:57 A | 2013-10-15 19:57 A | 31 | 100% | 2013-10-03 19:00 | 2013-10-08 20:00 | 5h | Fernando Raviola; Lucas Ferrero; Oscar Salomón | 15h | 15h |
| 33 | 1.3.1.3 | **Análisis/Diseño** | 1.81d | 2013-10-15 19:57 A | 2013-10-30 18:27 A | 29 | 100% | 2013-10-08 20:00 | 2013-10-15 20:00 | 1.5d |  | 43.5h | 43.5h |
| 34 | 1.3.1.3.1 | Refinación de Modelo de Casos de Usos | 3h | 2013-10-15 19:57 A | 2013-10-16 18:57 A |  | 100% | 2013-10-08 20:00 | 2013-10-09 18:00 | 2h | Fernando Raviola; Lucas Ferrero; Oscar Salomón | 9h | 9h |
| 35 | 1.3.1.3.2 | Definición preliminar de Diagrama de clases | 11.5h | 2013-10-16 18:57 A | 2013-10-30 18:27 A | 34 | 100% | 2013-10-09 18:00 | 2013-10-15 20:00 | 10h | Fernando Raviola; Lucas Ferrero; Oscar Salomón | 34.5h | 34.5h |
| 36 | 1.3.1.4 | **Implementación** | 2.75d | 2013-10-30 18:27 A | 2013-11-12 20:27 A | 33 | 100% | 2013-10-15 20:00 | 2013-10-31 20:00 | 2.5d |  | 66h | 66h |
| 37 | 1.3.1.4.1 | Desarrollo prototipos independientes de prueba | 22h | 2013-10-30 18:27 A | 2013-11-12 20:27 A |  | 100% | 2013-10-15 20:00 | 2013-10-31 20:00 | 20h | Fernando Raviola; Lucas Ferrero; Oscar Salomón | 66h | 66h |
| 38 | 1.3.1.5 | **Gestión del Proyecto** | 0.31d | 2013-11-12 20:27 A | 2013-11-13 18:57 A | 36 | 100% | 2013-10-31 20:00 | 2013-11-05 18:00 | 0.25d |  | 7.5h | 7.5h |
| 39 | 1.3.1.5.1 | Actualización y priorización de Riesgos | 0.5h | 2013-11-12 20:27 A | 2013-11-12 20:57 A |  | 100% | 2013-10-31 20:00 | 2013-10-31 21:00 | 1h | Fernando Raviola; Lucas Ferrero; Oscar Salomón | 1.5h | 1.5h |
| 40 | 1.3.1.5.2 | Refinación del Plan de Proyecto | 2h | 2013-11-12 20:57 A | 2013-11-13 18:57 A | 39 | 100% | 2013-11-05 17:00 | 2013-11-05 18:00 | 1h | Fernando Raviola; Lucas Ferrero; Oscar Salomón | 6h | 6h |
| 41 | 1.3.1.6 | **Gestión de Configuración** | 0.06d | 2013-11-13 18:57 A | 2013-11-13 19:27 A | 38 | 100% | 2013-11-05 18:00 | 2013-11-05 19:00 | 0.12d |  | 1.5h | 1.5h |
| 42 | 1.3.1.6.1 | Revisión de versionado de documentos modificados | 0.5h | 2013-11-13 18:57 A | 2013-11-13 19:27 A |  | 100% | 2013-11-05 18:00 | 2013-11-05 19:00 | 1h | Fernando Raviola; Lucas Ferrero; Oscar Salomón | 1.5h | 1.5h |
| 43 | 1.3.1.7 | **Ambiente** | 0.25d | 2013-11-13 19:27 A | 2013-11-14 17:27 A | 41 | 100% | 2013-11-05 19:00 | 2013-11-06 18:00 | 0.38d |  | 6h | 6h |
| 44 | 1.3.1.7.1 | Identificación de Tecnología | 2h | 2013-11-13 19:27 A | 2013-11-14 17:27 A |  | 100% | 2013-11-05 19:00 | 2013-11-06 18:00 | 3h | Fernando Raviola; Lucas Ferrero; Oscar Salomón | 6h | 6h |
| 45 | 1.3.2 | **Iteración E2** | 7d | 2013-11-14 17:27 A | 2014-02-27 17:27 A | 26 | 100% | 2013-11-06 18:00 | 2014-02-04 21:00 | 7.38d |  | 151h | 151h |
| 46 | 1.3.2.1 | **Modelo de Negocio** | 0.62d | 2013-11-14 17:27 A | 2013-11-19 18:27 A |  | 100% | 2013-11-06 18:00 | 2013-11-07 19:00 | 0.62d |  |  |  |
| 47 | 1.3.2.1.1 | Refinación del Modelo de Negocio | 5h | 2013-11-14 17:27 A | 2013-11-19 18:27 A |  | 100% | 2013-11-06 18:00 | 2013-11-07 19:00 | 5h |  |  |  |
| 48 | 1.3.2.2 | **Requerimientos** | 0.38d | 2013-11-19 18:27 A | 2013-11-20 17:27 A | 46 | 100% | 2013-11-07 19:00 | 2013-11-12 19:00 | 0.5d |  | 8h | 8h |
| 49 | 1.3.2.2.1 | Validación de requerimientos | 3h | 2013-11-19 18:27 A | 2013-11-20 17:27 A |  | 100% | 2013-11-07 19:00 | 2013-11-12 18:00 | 3h | Oscar Salomón; Fernando Raviola | 6h | 6h |
| 50 | 1.3.2.2.2 | Mapeo de Requerimientos a Casos de Uso | 2h | 2013-11-19 18:27 A | 2013-11-19 20:27 A |  | 100% | 2013-11-07 19:00 | 2013-11-12 19:00 | 4h | Lucas Ferrero | 2h | 2h |

| ID | WBS | Task | Duration | Start | Finish | Predecessors | Complete | Baseline start | Baseline finish | Baseline duration | Resources | Work | Actual work |
| --- | --- | --- | --- | --- | --- | --- | --- | --- | --- | --- | --- | --- | --- |
| 51 | 1.3.2.3 | **Análisis/Diseño** | 4.75d | 2013-11-20 17:27 A | 2014-02-05 19:27 A | 48 | 100% | 2013-11-12 19:00 | 2013-12-10 19:00 | 4.5d |  | 114h | 114h |
| 52 | 1.3.2.3.1 | Definición Inicial de diagrama de Clases | 11h | 2013-11-20 17:27 A | 2013-11-26 20:27 A |  | 100% | 2013-11-12 19:00 | 2013-11-14 21:00 | 10h | Fernando Raviola; Lucas Ferrero; Oscar Salomón | 33h | 33h |
| 53 | 1.3.2.3.2 | Definición inicial del Modelo de Datos | 9h | 2013-11-26 20:27 A | 2013-12-10 17:27 A | 52 | 100% | 2013-11-19 17:00 | 2013-11-20 21:00 | 8h | Fernando Raviola; Lucas Ferrero; Oscar Salomón | 27h | 27h |
| 54 | 1.3.2.3.3 | Definición inicial de Diagrama de Actividades | 11h | 2013-12-10 17:27 A | 2013-12-12 20:27 A | 53 | 100% | 2013-11-21 17:00 | 2013-11-26 21:00 | 8h | Fernando Raviola; Lucas Ferrero; Oscar Salomón | 33h | 33h |
| 55 | 1.3.2.3.4 | Definición inicial de Diagramas de Secuencia | 7h | 2013-12-12 20:27 A | 2014-02-05 19:27 A | 54 | 100% | 2013-11-27 17:00 | 2013-12-10 19:00 | 10h | Fernando Raviola; Lucas Ferrero; Oscar Salomón | 21h | 21h |
| 56 | 1.3.2.4 | **Implementación** | 0.5d | 2014-02-05 19:27 A | 2014-02-06 19:27 A | 51 | 100% | 2013-12-10 19:00 | 2013-12-11 21:00 | 0.75d |  | 12h | 12h |
| 57 | 1.3.2.4.1 | Mejoramientos de prototipos | 4h | 2014-02-05 19:27 A | 2014-02-06 19:27 A |  | 100% | 2013-12-10 19:00 | 2013-12-11 21:00 | 6h | Fernando Raviola; Lucas Ferrero; Oscar Salomón | 12h | 12h |
| 58 | 1.3.2.5 | **Gestión del Proyecto** | 0.12d | 2014-02-06 19:27 A | 2014-02-06 20:27 A | 56 | 100% | 2013-12-12 17:00 | 2013-12-12 19:00 | 0.25d |  | 3h | 3h |
| 59 | 1.3.2.5.1 | Validación del Plan de proyecto | 1h | 2014-02-06 19:27 A | 2014-02-06 20:27 A |  | 100% | 2013-12-12 17:00 | 2013-12-12 19:00 | 2h | Fernando Raviola; Lucas Ferrero; Oscar Salomón | 3h | 3h |
| 60 | 1.3.2.6 | **Gestión de Configuración** | 0.12d | 2014-02-06 20:27 A | 2014-02-26 17:27 A | 58 | 100% | 2013-12-12 19:00 | 2013-12-12 20:00 | 0.12d |  | 2h | 2h |
| 61 | 1.3.2.6.1 | Versionado de los prototipos | 1h | 2014-02-06 20:27 A | 2014-02-26 17:27 A |  | 100% | 2013-12-12 19:00 | 2013-12-12 20:00 | 1h | Oscar Salomón | 1h | 1h |
| 62 | 1.3.2.6.2 | Revisión de versionado de documentos modificados | 0.5h | 2014-02-06 20:27 A | 2014-02-06 20:57 A |  | 100% | 2013-12-12 19:00 | 2013-12-12 20:00 | 1h | Lucas Ferrero; Fernando Raviola | 1h | 1h |
| 63 | 1.3.2.7 | **Ambiente** | 0.5d | 2014-02-26 17:27 A | 2014-02-27 17:27 A | 60 | 100% | 2013-12-12 20:00 | 2014-02-04 21:00 | 0.62d |  | 12h | 12h |
| 64 | 1.3.2.7.1 | Preparación del ambiente de desarrollo | 4h | 2014-02-26 17:27 A | 2014-02-27 17:27 A |  | 100% | 2013-12-12 20:00 | 2014-02-04 21:00 | 5h | Fernando Raviola; Lucas Ferrero; Oscar Salomón | 12h | 12h |
| 65 | 1.3.3 | **Iteración E3** | 1.94d | 2014-02-27 17:27 A | 2014-03-13 20:57 A | 45 | 100% | 2014-02-05 17:00 | 2014-03-19 21:00 | 4.5d |  | 46.5h | 46.5h |
| 66 | 1.3.3.1 | **Requerimientos** | 0.12d | 2014-02-27 17:27 A | 2014-02-27 18:27 A |  | 100% | 2014-02-05 17:00 | 2014-02-05 20:00 | 0.38d |  | 3h | 3h |
| 67 | 1.3.3.1.1 | Validacion de Mapeo de Requerimientos a Casos de Uso | 1h | 2014-02-27 17:27 A | 2014-02-27 18:27 A |  | 100% | 2014-02-05 17:00 | 2014-02-05 20:00 | 3h | Fernando Raviola; Lucas Ferrero; Oscar Salomón | 3h | 3h |
| 68 | 1.3.3.2 | **Análisis/Diseño** | 1.12d | 2014-02-27 18:27 A | 2014-03-12 19:27 A | 66 | 100% | 2014-02-05 20:00 | 2014-03-13 18:00 | 2.75d |  | 27h | 27h |
| 69 | 1.3.3.2.1 | Refinación de Diagrama de Casos de Uso | 2h | 2014-02-27 18:27 A | 2014-02-27 20:27 A |  | 100% | 2014-02-05 20:00 | 2014-02-26 18:00 | 6h | Fernando Raviola; Lucas Ferrero; Oscar Salomón | 6h | 6h |
| 70 | 1.3.3.2.2 | Refinación de Diagrama de Clases | 3h | 2014-02-27 20:27 A | 2014-03-11 19:27 A | 69 | 100% | 2014-02-26 18:00 | 2014-02-27 20:00 | 6h | Fernando Raviola; Lucas Ferrero; Oscar Salomón | 9h | 9h |
| 71 | 1.3.3.2.3 | Refinación del Modelo de Datos | 2h | 2014-03-11 19:27 A | 2014-03-12 17:27 A | 70 | 100% | 2014-02-27 20:00 | 2014-03-11 20:00 | 4h | Fernando Raviola; Lucas Ferrero; Oscar Salomón | 6h | 6h |
| 72 | 1.3.3.2.4 | Descripción de casos de uso mas importantes | 2h | 2014-03-12 17:27 A | 2014-03-12 19:27 A | 71 | 100% | 2014-03-11 20:00 | 2014-03-13 18:00 | 6h | Fernando Raviola; Lucas Ferrero; Oscar Salomón | 6h | 6h |
| 73 | 1.3.3.3 | **Implementación** | 0.38d | 2014-03-12 19:27 A | 2014-03-13 18:27 A | 68 | 100% | 2014-03-13 18:00 | 2014-03-19 18:00 | 1d |  | 9h | 9h |
| 74 | 1.3.3.3.1 | Definición de interfaces de comunicación entre plataformas | 3h | 2014-03-12 19:27 A | 2014-03-13 18:27 A |  | 100% | 2014-03-13 18:00 | 2014-03-19 18:00 | 8h | Fernando Raviola; Lucas Ferrero; Oscar Salomón | 9h | 9h |

| ID | WBS | Task | Type | Duration | Start | Finish | Predecessors | Complete | Remaining | Baseline start | Baseline finish | Baseline duration | Total slack | Resources | Work | Actual work |
| --- | --- | --- | --- | --- | --- | --- | --- | --- | --- | --- | --- | --- | --- | --- | --- | --- |
| 75 | 1.3.3.4 | **Gestión del Proyecto** |  | 0.25d | 2014-03-13 18:27 A | 2014-03-13 20:27 A | 73 | 100% |  | 2014-03-19 18:00 | 2014-03-19 20:00 | 0.25d |  |  | 6h | 6h |
| 76 | 1.3.3.4.1 | Actualización de planes de prevención y contigencia para nuevos Riesgos |  | 2h | 2014-03-13 18:27 A | 2014-03-13 20:27 A |  | 100% |  | 2014-03-19 18:00 | 2014-03-19 20:00 | 2h |  | Fernando Raviola; Lucas Ferrero; Oscar Salomón | 6h | 6h |
| 77 | 1.3.3.5 | **Gestión de Configuración** |  | 0.06d | 2014-03-13 20:27 A | 2014-03-13 20:57 A | 75 | 100% |  | 2014-03-19 20:00 | 2014-03-19 21:00 | 0.12d |  |  | 1.5h | 1.5h |
| 78 | 1.3.3.5.1 | Revisión de versionado de documentos modificados |  | 0.5h | 2014-03-13 20:27 A | 2014-03-13 20:57 A |  | 100% |  | 2014-03-19 20:00 | 2014-03-19 21:00 | 1h |  | Fernando Raviola; Lucas Ferrero; Oscar Salomón | 1.5h | 1.5h |
| 79 | 1.4 | Arquitectura del ciclo de vida | milestone | 0h | 2014-03-13 20:57 A | 2014-03-13 20:57 A | 25 | 100% |  | 2014-03-19 21:00 | 2014-03-19 21:00 |  |  |  |  |  |
| 80 | 1.5 | **CONSTRUCCIÓN** |  | 30.88d | 2014-03-13 20:57 A | 2014-08-06 19:57 | 79 | 4% | 29.64d | 2014-03-20 17:00 | 2014-08-14 19:00 | 31.75d | 0d |  | 726h | 63h |
| 81 | 1.5.1 | **Iteración C1** |  | 2.62d | 2014-03-13 20:57 A | 2014-03-27 17:57 A |  | 100% |  | 2014-03-20 17:00 | 2014-04-03 21:00 | 3.5d |  |  | 63h | 63h |
| 82 | 1.5.1.1 | **Análisis/Diseño** |  | 0.5d | 2014-03-13 20:57 A | 2014-03-18 20:57 A |  | 100% |  | 2014-03-20 17:00 | 2014-03-25 21:00 | 1d |  |  | 12h | 12h |
| 83 | 1.5.1.1.1 | Refinación de Diagramas de Actividad |  | 2h | 2014-03-13 20:57 A | 2014-03-18 18:57 A |  | 100% |  | 2014-03-20 17:00 | 2014-03-20 21:00 | 4h |  | Fernando Raviola; Lucas Ferrero; Oscar Salomón | 6h | 6h |
| 84 | 1.5.1.1.2 | Refinación de Diagramas de Secuencia |  | 2h | 2014-03-18 18:57 A | 2014-03-18 20:57 A | 83 | 100% |  | 2014-03-25 17:00 | 2014-03-25 21:00 | 4h |  | Fernando Raviola; Lucas Ferrero; Oscar Salomón | 6h | 6h |
| 85 | 1.5.1.2 | **Implementación** |  | 1.38d | 2014-03-18 20:57 A | 2014-03-25 19:57 A | 82 | 100% |  | 2014-03-26 17:00 | 2014-04-02 20:00 | 1.88d |  |  | 33h | 33h |
| 86 | 1.5.1.2.1 | Construcción de Base de Datos |  | 6h | 2014-03-18 20:57 A | 2014-03-20 18:57 A |  | 100% |  | 2014-03-26 17:00 | 2014-03-27 21:00 | 8h |  | Fernando Raviola; Lucas Ferrero; Oscar Salomón | 18h | 18h |
| 87 | 1.5.1.2.2 | Definición de Interfaz de Usuario |  | 5h | 2014-03-20 18:57 A | 2014-03-25 19:57 A | 86 | 100% |  | 2014-04-01 17:00 | 2014-04-02 20:00 | 7h |  | Fernando Raviola; Lucas Ferrero; Oscar Salomón | 15h | 15h |
| 88 | 1.5.1.3 | **Gestión del Proyecto** |  | 0.62d | 2014-03-25 19:57 A | 2014-03-26 20:57 A | 85 | 100% |  | 2014-04-02 20:00 | 2014-04-03 20:00 | 0.5d |  |  | 15h | 15h |
| 89 | 1.5.1.3.1 | Actualización de Riesgos |  | 1h | 2014-03-25 19:57 A | 2014-03-25 20:57 A |  | 100% |  | 2014-04-02 20:00 | 2014-04-02 21:00 | 1h |  | Fernando Raviola; Lucas Ferrero; Oscar Salomón | 3h | 3h |
| 90 | 1.5.1.3.2 | Revisión de planificacion (posible replanificación) |  | 4h | 2014-03-25 20:57 A | 2014-03-26 20:57 A | 89 | 100% |  | 2014-04-03 17:00 | 2014-04-03 20:00 | 3h |  | Fernando Raviola; Lucas Ferrero; Oscar Salomón | 12h | 12h |
| 91 | 1.5.1.4 | **Gestión de Configuración** |  | 0.12d | 2014-03-26 20:57 A | 2014-03-27 17:57 A | 88 | 100% |  | 2014-04-03 20:00 | 2014-04-03 21:00 | 0.12d |  |  | 3h | 3h |
| 92 | 1.5.1.4.1 | Versionado de prototipos |  | 1h | 2014-03-26 20:57 A | 2014-03-27 17:57 A |  | 100% |  | 2014-04-03 20:00 | 2014-04-03 21:00 | 1h |  | Fernando Raviola | 1h | 1h |
| 93 | 1.5.1.4.2 | Revisión de versionado de documentos modificados |  | 1h | 2014-03-26 20:57 A | 2014-03-27 17:57 A |  | 100% |  | 2014-04-03 20:00 | 2014-04-03 21:00 | 1h |  | Oscar Salomón; Lucas Ferrero | 2h | 2h |
| 94 | 1.5.2 | **Iteración C2** |  | 5d | 2014-03-27 17:57 | 2014-04-22 17:57 | 81 |  |  | 2014-04-08 17:00 | 2014-04-29 21:00 | 5d | 0d |  | 119h |  |
| 95 | 1.5.2.1 | **Análisis/Diseño** |  | 1.62d | 2014-03-27 17:57 | 2014-04-03 18:57 |  |  |  | 2014-04-08 17:00 | 2014-04-15 18:00 | 1.62d | 0d |  | 39h |  |
| 96 | 1.5.2.1.1 | Definición inicial del Modelo de componentes |  | 9h | 2014-03-27 17:57 | 2014-04-02 18:57 |  |  |  | 2014-04-08 17:00 | 2014-04-10 18:00 | 9h | 0d | Fernando Raviola; Lucas Ferrero; Oscar Salomón | 27h |  |
| 97 | 1.5.2.1.2 | Refinación de Diagramas de clases (agregado de operaciones) |  | 4h | 2014-04-02 18:57 | 2014-04-03 18:57 | 96 |  |  | 2014-04-10 18:00 | 2014-04-15 18:00 | 4h | 0d | Fernando Raviola; Lucas Ferrero; Oscar Salomón | 12h |  |
| 98 | 1.5.2.2 | **Implementación** |  | 2.38d | 2014-04-03 18:57 | 2014-04-16 17:57 | 95 |  |  | 2014-04-15 18:00 | 2014-04-23 21:00 | 2.38d | 0d |  | 56h |  |
| 99 | 1.5.2.2.1 | Codificación de Interfaz de usuario (FrontEnd) |  | 18h | 2014-04-03 18:57 | 2014-04-15 20:57 |  |  |  | 2014-04-15 18:00 | 2014-04-23 20:00 | 18h | 0.12d | Oscar Salomón | 18h |  |
| 100 | 1.5.2.2.2 | Codificación de Interfaz de usuario (BackEnd) |  | 19h | 2014-04-03 18:57 | 2014-04-16 17:57 |  |  |  | 2014-04-15 18:00 | 2014-04-23 21:00 | 19h | 0d | Lucas Ferrero | 19h |  |
| 101 | 1.5.2.2.3 | Codificación de Interfaz de usuario (Android) |  | 19h | 2014-04-03 18:57 | 2014-04-16 17:57 |  |  |  | 2014-04-15 18:00 | 2014-04-23 21:00 | 19h | 0d | Fernando Raviola | 19h |  |

| ID | WBS | Task | Duration | Start | Finish | Predecessors | Baseline start | Baseline finish | Baseline duration | Total slack | Resources | Work |
| --- | --- | --- | --- | --- | --- | --- | --- | --- | --- | --- | --- | --- |
| 102 | 1.5.2.3 | **Gestión del Proyecto** | 0.75d | 2014-04-16 17:57 | 2014-04-17 19:57 | 98 | 2014-04-24 17:00 | 2014-04-29 19:00 | 0.75d | 0d |  | 18h |
| 103 | 1.5.2.3.1 | Actualización de Riesgos | 3h | 2014-04-16 17:57 | 2014-04-16 20:57 |  | 2014-04-24 17:00 | 2014-04-24 20:00 | 3h | 0d | Fernando Raviola; Lucas Ferrero; Oscar Salomón | 9h |
| 104 | 1.5.2.3.2 | Revisión de planificacion (posible replanificación) | 3h | 2014-04-16 20:57 | 2014-04-17 19:57 | 103 | 2014-04-24 20:00 | 2014-04-29 19:00 | 3h | 0d | Fernando Raviola; Lucas Ferrero; Oscar Salomón | 9h |
| 105 | 1.5.2.4 | **Gestión de Configuración** | 0.25d | 2014-04-17 19:57 | 2014-04-22 17:57 | 102 | 2014-04-29 19:00 | 2014-04-29 21:00 | 0.25d | 0d |  | 6h |
| 106 | 1.5.2.4.1 | Versionado de interfaz de usuario | 1h | 2014-04-17 19:57 | 2014-04-17 20:57 |  | 2014-04-29 19:00 | 2014-04-29 20:00 | 1h | 0d | Fernando Raviola; Lucas Ferrero; Oscar Salomón | 3h |
| 107 | 1.5.2.4.2 | Revisión de versionado de documentos modificados | 1h | 2014-04-17 20:57 | 2014-04-22 17:57 | 106 | 2014-04-29 20:00 | 2014-04-29 21:00 | 1h | 0d | Fernando Raviola; Lucas Ferrero; Oscar Salomón | 3h |
| 108 | 1.5.3 | **Iteración C3** | 3.5d | 2014-04-22 17:57 | 2014-05-07 17:57 | 94 | 2014-04-30 17:00 | 2014-05-14 21:00 | 3.5d | 0d |  | 82h |
| 109 | 1.5.3.1 | **Análisis/Diseño** | 0.38d | 2014-04-22 17:57 | 2014-04-22 20:57 |  | 2014-04-30 17:00 | 2014-04-30 20:00 | 0.38d | 0d |  | 9h |
| 110 | 1.5.3.1.1 | Refinación del Modelo de componentes | 3h | 2014-04-22 17:57 | 2014-04-22 20:57 |  | 2014-04-30 17:00 | 2014-04-30 20:00 | 3h | 0d | Fernando Raviola; Lucas Ferrero; Oscar Salomón | 9h |
| 111 | 1.5.3.2 | **Implementación** | 2.62d | 2014-04-22 20:57 | 2014-05-06 17:57 | 109 | 2014-04-30 20:00 | 2014-05-13 21:00 | 2.62d | 0d |  | 61h |
| 112 | 1.5.3.2.1 | Codificacion de logeo de usuario (FrontEnd) | 21h | 2014-04-22 20:57 | 2014-05-06 17:57 |  | 2014-04-30 20:00 | 2014-05-13 21:00 | 21h | 0d | Oscar Salomón | 21h |
| 113 | 1.5.3.2.2 | Codificación de seguridad [Roles y Usuario] (BackEnd) | 20h | 2014-04-22 20:57 | 2014-05-01 20:57 |  | 2014-04-30 20:00 | 2014-05-13 20:00 | 20h | 0.12d | Lucas Ferrero | 20h |
| 114 | 1.5.3.2.3 | Codificación de Local Storage (Android) | 20h | 2014-04-22 20:57 | 2014-05-01 20:57 |  | 2014-04-30 20:00 | 2014-05-13 20:00 | 20h | 0.12d | Fernando Raviola | 20h |
| 115 | 1.5.3.3 | **Gestión del Proyecto** | 0.38d | 2014-05-06 17:57 | 2014-05-06 20:57 | 111 | 2014-05-14 17:00 | 2014-05-14 20:00 | 0.38d | 0d |  | 9h |
| 116 | 1.5.3.3.1 | Actualización de Riesgos | 3h | 2014-05-06 17:57 | 2014-05-06 20:57 |  | 2014-05-14 17:00 | 2014-05-14 20:00 | 3h | 0d | Lucas Ferrero | 3h |
| 117 | 1.5.3.3.2 | Revisión de planificacion (posible replanificación) | 3h | 2014-05-06 17:57 | 2014-05-06 20:57 |  | 2014-05-14 17:00 | 2014-05-14 20:00 | 3h | 0d | Oscar Salomón; Fernando Raviola | 6h |
| 118 | 1.5.3.4 | **Gestión de Configuración** | 0.12d | 2014-05-06 20:57 | 2014-05-07 17:57 | 115 | 2014-05-14 20:00 | 2014-05-14 21:00 | 0.12d | 0d |  | 3h |
| 119 | 1.5.3.4.1 | Versionado de todos los proyectos | 1h | 2014-05-06 20:57 | 2014-05-07 17:57 |  | 2014-05-14 20:00 | 2014-05-14 21:00 | 1h | 0d | Oscar Salomón | 1h |
| 120 | 1.5.3.4.2 | Revisión de versionado de documentos modificados | 1h | 2014-05-06 20:57 | 2014-05-07 17:57 |  | 2014-05-14 20:00 | 2014-05-14 21:00 | 1h | 0d | Lucas Ferrero; Fernando Raviola | 2h |
| 121 | 1.5.4 | **Iteración C4** | 4.38d | 2014-05-07 17:57 | 2014-05-27 20:57 | 108 | 2014-05-15 17:00 | 2014-06-04 20:00 | 4.38d | 0d |  | 101h |
| 122 | 1.5.4.1 | **Análisis/Diseño** | 0.5d | 2014-05-07 17:57 | 2014-05-08 17:57 |  | 2014-05-15 17:00 | 2014-05-15 21:00 | 0.5d | 0d |  | 12h |
| 123 | 1.5.4.1.1 | Refinación del Modelo de Datos | 4h | 2014-05-07 17:57 | 2014-05-08 17:57 |  | 2014-05-15 17:00 | 2014-05-15 21:00 | 4h | 0d | Fernando Raviola; Lucas Ferrero; Oscar Salomón | 12h |
| 124 | 1.5.4.2 | **Implementación** | 3.5d | 2014-05-08 17:57 | 2014-05-27 17:57 | 122 | 2014-05-20 17:00 | 2014-06-03 21:00 | 3.5d | 0d |  | 82h |
| 125 | 1.5.4.2.1 | Codificación de Gestión de reservas online (FrontEnd) | 28h | 2014-05-08 17:57 | 2014-05-27 17:57 |  | 2014-05-20 17:00 | 2014-06-03 21:00 | 28h | 0d | Oscar Salomón | 28h |
| 126 | 1.5.4.2.2 | Codificación de ABM principales (BackEnd) | 26h | 2014-05-08 17:57 | 2014-05-22 19:57 |  | 2014-05-20 17:00 | 2014-06-03 19:00 | 26h | 0.25d | Lucas Ferrero | 26h |
| 127 | 1.5.4.2.3 | Codificación de ABM principales (Android) | 28h | 2014-05-08 17:57 | 2014-05-27 17:57 |  | 2014-05-20 17:00 | 2014-06-03 21:00 | 28h | 0d | Fernando Raviola | 28h |

| ID | WBS | Task | Duration | Start | Finish | Predecessors | Baseline start | Baseline finish | Baseline duration | Total slack | Resources | Work |
| --- | --- | --- | --- | --- | --- | --- | --- | --- | --- | --- | --- | --- |
| 128 | 1.5.4.3 | **Gestión del Proyecto** | 0.25d | 2014-05-27 17:57 | 2014-05-27 19:57 | 124 | 2014-06-04 17:00 | 2014-06-04 19:00 | 0.25d | 0d |  | 4h |
| 129 | 1.5.4.3.1 | Actualización de Riesgos | 2h | 2014-05-27 17:57 | 2014-05-27 19:57 |  | 2014-06-04 17:00 | 2014-06-04 19:00 | 2h | 0d | Fernando Raviola | 2h |
| 130 | 1.5.4.3.2 | Revisión de planificacion (posible replanificación) | 1h | 2014-05-27 17:57 | 2014-05-27 18:57 |  | 2014-06-04 17:00 | 2014-06-04 18:00 | 1h | 0.12d | Lucas Ferrero; Oscar Salomón | 2h |
| 131 | 1.5.4.4 | **Gestión de Configuración** | 0.12d | 2014-05-27 19:57 | 2014-05-27 20:57 | 128 | 2014-06-04 19:00 | 2014-06-04 20:00 | 0.12d | 0d |  | 3h |
| 132 | 1.5.4.4.1 | Versionado de todos los proyectos | 1h | 2014-05-27 19:57 | 2014-05-27 20:57 |  | 2014-06-04 19:00 | 2014-06-04 20:00 | 1h | 0d | Lucas Ferrero | 1h |
| 133 | 1.5.4.4.2 | Revisión de versionado de documentos modificados | 1h | 2014-05-27 19:57 | 2014-05-27 20:57 |  | 2014-06-04 19:00 | 2014-06-04 20:00 | 1h | 0d | Oscar Salomón; Fernando Raviola | 2h |
| 134 | 1.5.5 | **Iteración C5** | 8d | 2014-05-27 20:57 | 2014-07-02 20:57 | 121 | 2014-06-04 20:00 | 2014-07-10 20:00 | 8d | 0d |  | 186h |
| 135 | 1.5.5.1 | **Análisis/Diseño** | 0.75d | 2014-05-27 20:57 | 2014-05-29 18:57 |  | 2014-06-04 20:00 | 2014-06-10 18:00 | 0.75d | 0d |  | 18h |
| 136 | 1.5.5.1.1 | Revisión de Diagramas y Modelos de Análisis/Diseño | 6h | 2014-05-27 20:57 | 2014-05-29 18:57 |  | 2014-06-04 20:00 | 2014-06-10 18:00 | 6h | 0d | Fernando Raviola; Lucas Ferrero; Oscar Salomón | 18h |
| 137 | 1.5.5.2 | **Implementación** | 5.62d | 2014-05-29 18:57 | 2014-06-25 19:57 | 135 | 2014-06-10 18:00 | 2014-07-03 19:00 | 5.62d | 0d |  | 131h |
| 138 | 1.5.5.2.1 | Codificación de Calculos de tiempos de espera (FrontEnd) | 43h | 2014-05-29 18:57 | 2014-06-25 17:57 |  | 2014-06-10 18:00 | 2014-07-02 21:00 | 43h | 0.25d | Oscar Salomón | 43h |
| 139 | 1.5.5.2.2 | Codificación de Funciones básicas (BackEnd) | 43h | 2014-05-29 18:57 | 2014-06-25 17:57 |  | 2014-06-10 18:00 | 2014-07-02 21:00 | 43h | 0.25d | Lucas Ferrero | 43h |
| 140 | 1.5.5.2.3 | Codificación de visualizador de ordenes (Android) | 45h | 2014-05-29 18:57 | 2014-06-25 19:57 |  | 2014-06-10 18:00 | 2014-07-03 19:00 | 45h | 0d | Fernando Raviola | 45h |
| 141 | 1.5.5.3 | **Pruebas** | 1.25d | 2014-06-25 19:57 | 2014-07-02 17:57 | 137 | 2014-07-03 19:00 | 2014-07-09 21:00 | 1.25d | 0d |  | 30h |
| 142 | 1.5.5.3.1 | Pruebas de Funcionalidad (para las 3 aplicaciones) | 10h | 2014-06-25 19:57 | 2014-07-02 17:57 |  | 2014-07-03 19:00 | 2014-07-09 21:00 | 10h | 0d | Fernando Raviola; Lucas Ferrero; Oscar Salomón | 30h |
| 143 | 1.5.5.4 | **Gestión del Proyecto** | 0.25d | 2014-07-02 17:57 | 2014-07-02 19:57 | 141 | 2014-07-10 17:00 | 2014-07-10 19:00 | 0.25d | 0d |  | 4h |
| 144 | 1.5.5.4.1 | Actualización de Riesgos | 2h | 2014-07-02 17:57 | 2014-07-02 19:57 |  | 2014-07-10 17:00 | 2014-07-10 19:00 | 2h | 0d | Oscar Salomón | 2h |
| 145 | 1.5.5.4.2 | Revisión de planificacion (posible replanificación) | 1h | 2014-07-02 17:57 | 2014-07-02 18:57 |  | 2014-07-10 17:00 | 2014-07-10 18:00 | 1h | 0.12d | Lucas Ferrero; Fernando Raviola | 2h |
| 146 | 1.5.5.5 | **Gestión de Configuración** | 0.12d | 2014-07-02 19:57 | 2014-07-02 20:57 | 143 | 2014-07-10 19:00 | 2014-07-10 20:00 | 0.12d | 0d |  | 3h |
| 147 | 1.5.5.5.1 | Versionado de todos los proyectos | 1h | 2014-07-02 19:57 | 2014-07-02 20:57 |  | 2014-07-10 19:00 | 2014-07-10 20:00 | 1h | 0d | Fernando Raviola | 1h |
| 148 | 1.5.5.5.2 | Revisión de versionado de documentos modificados | 1h | 2014-07-02 19:57 | 2014-07-02 20:57 |  | 2014-07-10 19:00 | 2014-07-10 20:00 | 1h | 0d | Oscar Salomón; Lucas Ferrero | 2h |
| 149 | 1.5.6 | **Iteración C6** | 7.38d | 2014-07-02 20:57 | 2014-08-06 19:57 | 134 | 2014-07-10 20:00 | 2014-08-14 19:00 | 7.38d | 0d |  | 175h |
| 150 | 1.5.6.1 | **Análisis/Diseño** | 1d | 2014-07-02 20:57 | 2014-07-08 20:57 |  | 2014-07-10 20:00 | 2014-07-16 20:00 | 1d | 0d |  | 24h |
| 151 | 1.5.6.1.1 | Revisión de Diagramas y Modelos de Análisis/Diseño | 8h | 2014-07-02 20:57 | 2014-07-08 20:57 |  | 2014-07-10 20:00 | 2014-07-16 20:00 | 8h | 0d | Fernando Raviola; Lucas Ferrero; Oscar Salomón | 24h |

| ID | WBS | Task | Type | Duration | Start | Finish | Predecessors | Baseline start | Baseline finish | Baseline duration | Total slack | Resources | Work |
| --- | --- | --- | --- | --- | --- | --- | --- | --- | --- | --- | --- | --- | --- |
| 152 | 1.5.6.2 | **Implementación** |  | 4.75d | 2014-07-08 20:57 | 2014-07-30 18:57 | 150 | 2014-07-16 20:00 | 2014-08-07 18:00 | 4.75d | 0d |  | 112h |
| 153 | 1.5.6.2.1 | Codificación de Calculos de tiempos de espera (FrontEnd) |  | 38h | 2014-07-08 20:57 | 2014-07-30 18:57 |  | 2014-07-16 20:00 | 2014-08-07 18:00 | 38h | 0d | Oscar Salomón | 38h |
| 154 | 1.5.6.2.2 | Codificación de visualizador de Ordenes (BackEnd) |  | 36h | 2014-07-08 20:57 | 2014-07-29 20:57 |  | 2014-07-16 20:00 | 2014-08-06 20:00 | 36h | 0.25d | Lucas Ferrero | 36h |
| 155 | 1.5.6.2.3 | Codificación de personalización gráfica (Android) |  | 38h | 2014-07-08 20:57 | 2014-07-30 18:57 |  | 2014-07-16 20:00 | 2014-08-07 18:00 | 38h | 0d | Fernando Raviola | 38h |
| 156 | 1.5.6.3 | **Pruebas** |  | 1.25d | 2014-07-30 18:57 | 2014-08-05 20:57 | 152 | 2014-08-07 18:00 | 2014-08-13 20:00 | 1.25d | 0d |  | 30h |
| 157 | 1.5.6.3.1 | Pruebas de comunicación de interfaces y pruebas de funcionalidad |  | 10h | 2014-07-30 18:57 | 2014-08-05 20:57 |  | 2014-08-07 18:00 | 2014-08-13 20:00 | 10h | 0d | Fernando Raviola; Lucas Ferrero; Oscar Salomón | 30h |
| 158 | 1.5.6.4 | **Gestión del Proyecto** |  | 0.12d | 2014-08-05 20:57 | 2014-08-06 17:57 | 156 | 2014-08-13 20:00 | 2014-08-13 21:00 | 0.12d | 0d |  | 3h |
| 159 | 1.5.6.4.1 | Actualización de Riesgos |  | 1h | 2014-08-05 20:57 | 2014-08-06 17:57 |  | 2014-08-13 20:00 | 2014-08-13 21:00 | 1h | 0d | Fernando Raviola; Oscar Salomón | 2h |
| 160 | 1.5.6.4.2 | Revisión de planificacion (posible replanificación) |  | 1h | 2014-08-05 20:57 | 2014-08-06 17:57 |  | 2014-08-13 20:00 | 2014-08-13 21:00 | 1h | 0d | Lucas Ferrero | 1h |
| 161 | 1.5.6.5 | **Gestión de Configuración** |  | 0.25d | 2014-08-06 17:57 | 2014-08-06 19:57 | 158 | 2014-08-14 17:00 | 2014-08-14 19:00 | 0.25d | 0d |  | 6h |
| 162 | 1.5.6.5.1 | Versionado de todos los proyectos |  | 2h | 2014-08-06 17:57 | 2014-08-06 19:57 |  | 2014-08-14 17:00 | 2014-08-14 19:00 | 2h | 0d | Oscar Salomón | 2h |
| 163 | 1.5.6.5.2 | Revisión de versionado de documentos modificados |  | 2h | 2014-08-06 17:57 | 2014-08-06 19:57 |  | 2014-08-14 17:00 | 2014-08-14 19:00 | 2h | 0d | Lucas Ferrero; Fernando Raviola | 4h |
| 164 | 1.6 | Capacidad Operacional Inicial | milestone | 0h | 2014-08-06 19:57 | 2014-08-06 19:57 | 80 | 2014-08-14 19:00 | 2014-08-14 19:00 |  | 0d |  |  |
| 165 | 1.7 | **TRANSICIÓN** |  | 7.88d | 2014-08-06 19:57 | 2014-09-11 18:57 | 164 | 2014-08-14 19:00 | 2014-09-23 18:00 | 7.88d | 0d |  | 189h |
| 166 | 1.7.1 | **Iteración T1** |  | 7.88d | 2014-08-06 19:57 | 2014-09-11 18:57 |  | 2014-08-14 19:00 | 2014-09-23 18:00 | 7.88d | 0d |  | 189h |
| 167 | 1.7.1.1 | **Implementación** |  | 2.5d | 2014-08-06 19:57 | 2014-08-19 19:57 |  | 2014-08-14 19:00 | 2014-08-27 19:00 | 2.5d | 0d |  | 60h |
| 168 | 1.7.1.1.1 | Elaboracion de documentación para usuarios y videos tutoriales |  | 20h | 2014-08-06 19:57 | 2014-08-19 19:57 |  | 2014-08-14 19:00 | 2014-08-27 19:00 | 20h | 0d | Fernando Raviola; Lucas Ferrero; Oscar Salomón | 60h |
| 169 | 1.7.1.2 | **Despliegue** |  | 3d | 2014-08-19 19:57 | 2014-09-02 19:57 | 167 | 2014-08-27 19:00 | 2014-09-10 19:00 | 3d | 0d |  | 72h |
| 170 | 1.7.1.2.1 | Modelo de despliegue |  | 10h | 2014-08-19 19:57 | 2014-08-26 17:57 |  | 2014-08-27 19:00 | 2014-09-02 21:00 | 10h | 0d | Fernando Raviola; Lucas Ferrero; Oscar Salomón | 30h |
| 171 | 1.7.1.2.2 | Integración y puesta a punto del sistema |  | 14h | 2014-08-26 17:57 | 2014-09-02 19:57 | 170 | 2014-09-03 17:00 | 2014-09-10 19:00 | 14h | 0d | Fernando Raviola; Lucas Ferrero; Oscar Salomón | 42h |
| 172 | 1.7.1.3 | **Gestión del Proyecto** |  | 2.12d | 2014-09-02 19:57 | 2014-09-10 20:57 | 169 | 2014-09-10 19:00 | 2014-09-18 20:00 | 2.12d | 0d |  | 51h |
| 173 | 1.7.1.3.1 | Actualización de Riesgos |  | 1h | 2014-09-02 19:57 | 2014-09-02 20:57 |  | 2014-09-10 19:00 | 2014-09-10 20:00 | 1h | 0d | Fernando Raviola; Lucas Ferrero; Oscar Salomón | 3h |
| 174 | 1.7.1.3.2 | Revisión de planificacion (posible replanificación) |  | 1h | 2014-09-02 20:57 | 2014-09-03 17:57 | 173 | 2014-09-10 20:00 | 2014-09-10 21:00 | 1h | 0d | Fernando Raviola; Lucas Ferrero; Oscar Salomón | 3h |
| 175 | 1.7.1.3.3 | Análisis de resultados del proyecto |  | 15h | 2014-09-03 17:57 | 2014-09-10 20:57 | 174 | 2014-09-11 17:00 | 2014-09-18 20:00 | 15h | 0d | Fernando Raviola; Lucas Ferrero; Oscar Salomón | 45h |

| ID | WBS | Task | Type | Duration | Start | Finish | Predecessors | Complete | Remaining | Baseline start | Baseline finish | Baseline duration | Total slack | Constraint | Resources | Work |
| --- | --- | --- | --- | --- | --- | --- | --- | --- | --- | --- | --- | --- | --- | --- | --- | --- |
| 176 | 1.7.1.4 | **Gestión de Configuración** |  | 0.25d | 2014-09-10 20:57 | 2014-09-11 18:57 | 172 |  |  | 2014-09-18 20:00 | 2014-09-23 18:00 | 0.25d | 0d |  |  | 6h |
| 177 | 1.7.1.4.1 | Versionado de todos los proyectos |  | 2h | 2014-09-10 20:57 | 2014-09-11 18:57 |  |  |  | 2014-09-18 20:00 | 2014-09-23 18:00 | 2h | 0d |  | Fernando Raviola | 2h |
| 178 | 1.7.1.4.2 | Revisión de versionado de documentos modificados |  | 2h | 2014-09-10 20:57 | 2014-09-11 18:57 |  |  |  | 2014-09-18 20:00 | 2014-09-23 18:00 | 2h | 0d |  | Lucas Ferrero; Oscar Salomón | 4h |
| 179 | 1.8 | Lanzamiento de producto | milestone | 0h | 2014-09-11 18:57 | 2014-09-11 18:57 | 165 |  |  | 2014-09-23 18:00 | 2014-09-23 18:00 |  | 0d |  |  |  |
| 180 | 1.9 | Fin de Proyecto | milestone | 0h | 2014-09-11 18:57 | 2014-09-11 18:57 | 179 |  |  | 2014-09-23 18:00 | 2014-09-23 18:00 |  | 0d |  |  |  |
| 181 | 1.10 | **Informe de avance mensual** |  | 58d | 2013-08-28 09:00 A | 2014-08-27 13:00 |  | 46% | 31.23d | 2013-08-28 09:00 | 2014-08-27 13:00 | 58d | 0d |  |  |  |
| 182 | 1.10.1 | Informe de avance mensual 1 | manual | 4h | 2013-08-28 09:00 A | 2013-08-28 13:00 A |  | 100% |  | 2013-08-28 09:00 | 2013-08-28 13:00 | 4h |  | start no earlier than 2013-08-28 09:00 |  |  |
| 183 | 1.10.2 | Informe de avance mensual 2 | manual | 4h | 2013-09-25 09:00 A | 2013-09-25 13:00 A |  | 100% |  | 2013-09-25 09:00 | 2013-09-25 13:00 | 4h |  | start no earlier than 2013-09-25 09:00 |  |  |
| 184 | 1.10.3 | Informe de avance mensual 3 | manual | 4h | 2013-10-30 09:00 A | 2013-10-30 13:00 A |  | 100% |  | 2013-10-30 09:00 | 2013-10-30 13:00 | 4h |  | start no earlier than 2013-10-30 09:00 |  |  |
| 185 | 1.10.4 | Informe de avance mensual 4 | manual | 4h | 2013-12-10 09:00 A | 2013-12-10 13:00 A |  | 100% |  | 2013-11-27 09:00 | 2013-11-27 13:00 | 4h |  | start no earlier than 2013-12-10 09:00 |  |  |
| 186 | 1.10.5 | Informe de avance mensual 5 | manual | 4h | 2014-02-27 09:00 A | 2014-02-27 13:00 A |  | 100% |  | 2013-12-25 09:00 | 2013-12-25 13:00 | 4h |  | start no earlier than 2014-02-27 09:00 |  |  |
| 187 | 1.10.6 | Informe de avance mensual 6 | manual | 4h | 2014-03-27 09:00 A | 2014-03-27 13:00 A |  | 100% |  | 2014-01-29 09:00 | 2014-01-29 13:00 | 4h |  | start no earlier than 2014-03-27 09:00 |  |  |
| 188 | 1.10.7 | Informe de avance mensual 7 | manual | 4h | 2014-02-26 09:00 | 2014-02-26 13:00 |  |  |  | 2014-02-26 09:00 | 2014-02-26 13:00 | 4h |  | start no earlier than 2014-02-26 09:00 |  |  |
| 189 | 1.10.8 | Informe de avance mensual 8 | manual | 4h | 2014-03-26 09:00 | 2014-03-26 13:00 |  |  |  | 2014-03-26 09:00 | 2014-03-26 13:00 | 4h |  | start no earlier than 2014-03-26 09:00 |  |  |
| 190 | 1.10.9 | Informe de avance mensual 9 | manual | 4h | 2014-04-30 09:00 | 2014-04-30 13:00 |  |  |  | 2014-04-30 09:00 | 2014-04-30 13:00 | 4h |  | start no earlier than 2014-04-30 09:00 |  |  |
| 191 | 1.10.10 | Informe de avance mensual 10 | manual | 4h | 2014-05-28 09:00 | 2014-05-28 13:00 |  |  |  | 2014-05-28 09:00 | 2014-05-28 13:00 | 4h |  | start no earlier than 2014-05-28 09:00 |  |  |
| 192 | 1.10.11 | Informe de avance mensual 11 | manual | 4h | 2014-06-25 09:00 | 2014-06-25 13:00 |  |  |  | 2014-06-25 09:00 | 2014-06-25 13:00 | 4h |  | start no earlier than 2014-06-25 09:00 |  |  |
| 193 | 1.10.12 | Informe de avance mensual 12 | manual | 4h | 2014-07-30 09:00 | 2014-07-30 13:00 |  |  |  | 2014-07-30 09:00 | 2014-07-30 13:00 | 4h |  | start no earlier than 2014-07-30 09:00 |  |  |
| 194 | 1.10.13 | Informe de avance mensual 13 | manual | 4h | 2014-08-27 09:00 | 2014-08-27 13:00 |  |  |  | 2014-08-27 09:00 | 2014-08-27 13:00 | 4h |  | start no earlier than 2014-08-27 09:00 |  |  |
